# DiagramaIncremento1.0

Schedule from MS Project, 2026-10-07 to 2026-11-02, status date 2026-10-26, A marks actual dates.

## Calendars

- Estándar: Mon-Fri 09:00-13:00, 15:00-19:00; Sat-Sun off.

## Resources

| Resource |
| --- |
| Gonzalo |
| Andrea |
| Santiago |

## Schedule

| ID | WBS | Task | Type | Duration | Start | Finish | Predecessors | Complete | Remaining | Total slack | Free slack | Constraint | Resources | Work | Actual work |
| --- | --- | --- | --- | --- | --- | --- | --- | --- | --- | --- | --- | --- | --- | --- | --- |
| 1 | 1 | **FASE 0: ARQUITECTURA Y BASE DE DATOS** |  | 5d | 2026-10-07 09:00 A | 2026-10-13 19:00 |  | 94% | 0.29d |  |  |  |  | 76h | 73h |
| 2 | 1.1 | 0.1 Dos bases de datos (principal y estudiantes) y router EstudiantesRouter |  | 2d | 2026-10-07 09:00 A | 2026-10-08 19:00 A |  | 100% |  |  |  |  | Gonzalo | 16h | 16h |
| 3 | 1.2 | 0.2 Modelos Taller, Inscripción, Historial, Usuario y EstudianteEstatico (solo lectura) |  | 1.5d | 2026-10-09 09:00 A | 2026-10-12 13:00 A | 2 | 100% |  |  |  |  | Gonzalo; Andrea | 24h | 24h |
| 4 | 1.3 | 0.3 Revisar reglas contra el Excel y acordar los casos de prueba |  | 1.5d | 2026-10-07 09:00 A | 2026-10-08 13:00 A |  | 100% |  |  |  |  | Santiago; Andrea | 24h | 24h |
| 5 | 1.4 | 0.4 Configurar SQL |  | 1.5d | 2026-10-12 15:00 A | 2026-10-13 19:00 | 3 | 75% | 0.38d | 1.5d | 1d |  | Gonzalo | 12h | 9h |
| 6 | 2 | Hito: modelos listos para desarrollar las historias | milestone | 0d | 2026-10-12 13:00 A | 2026-10-12 13:00 A | 3, 4 | 100% |  |  |  |  |  |  |  |
| 7 | 3 | **HU-01: Publicar talleres con código único** |  | 12.5d | 2026-10-12 15:00 A | 2026-10-29 09:00 |  | 79% | 2.68d | 2d |  |  |  | 28h | 22h |
| 8 | 3.1 | HU-01 · Lógica: registrar y editar taller, código TAL-DAN-01 |  | 1.5d | 2026-10-12 15:00 A | 2026-10-13 19:00 | 6 | 75% | 0.38d | 1.75d | 1d |  | Gonzalo | 12h | 9h |
| 9 | 3.2 | HU-01 · Pruebas pytest |  | 0.5d | 2026-10-14 09:00 A | 2026-10-14 13:00 A | 8 | 100% |  |  |  |  | Andrea | 4h | 4h |
| 10 | 3.3 | HU-01 · HTML básico: formulario de taller y lista de talleres |  | 0.5d | 2026-10-14 15:00 A | 2026-10-14 19:00 | 6, 9 | 75% | 0.12d | 0.75d | 0d |  | Santiago | 4h | 3h |
| 11 | 3.4 | HU-01 · Conectar vista con la lógica y la base de datos |  | 1d | 2026-10-15 09:00 A | 2026-10-15 19:00 | 10, 8 | 75% | 0.25d | 11d | 9d |  | Gonzalo | 8h | 6h |
| 12 | 3.5 | Hito: HU-01 terminada y probada | milestone | 0d | 2026-10-29 09:00 | 2026-10-29 09:00 | 9, 11 |  |  | 2d |  | start no earlier than 2026-10-29 09:00 |  |  |  |
| 13 | 4 | **HU-02: Solicitar una plaza** |  | 13.5d | 2026-10-12 15:00 A | 2026-10-30 09:00 |  | 86% | 1.93d | 1d |  |  |  | 44h | 40h |
| 14 | 4.1 | HU-02 · Lógica: ajustar código existente: confirmar, espera 20 % y rechazos |  | 1d | 2026-10-12 15:00 A | 2026-10-13 13:00 A | 6 | 100% |  |  |  |  | Andrea; Gonzalo | 16h | 16h |
| 15 | 4.2 | HU-02 · Pruebas pytest |  | 1d | 2026-10-13 15:00 A | 2026-10-14 13:00 A | 14 | 100% |  |  |  |  | Andrea; Gonzalo | 16h | 16h |
| 16 | 4.3 | HU-02 · HTML básico: botón y mensaje 'Solicitar plaza' |  | 0.5d | 2026-10-15 09:00 A | 2026-10-15 13:00 A | 10 | 100% |  |  |  |  | Santiago | 4h | 4h |
| 17 | 4.4 | HU-02 · Conectar vista con la lógica y la base de datos |  | 1d | 2026-10-15 15:00 A | 2026-10-16 13:00 | 16, 14 | 50% | 0.5d | 10.5d | 9.5d |  | Santiago | 8h | 4h |
| 18 | 4.5 | Hito: HU-02 terminada y probada | milestone | 0d | 2026-10-30 09:00 | 2026-10-30 09:00 | 15, 17 |  |  | 1d |  | start no earlier than 2026-10-30 09:00 |  |  |  |
| 19 | 5 | **HU-03: Registrar inscripciones como operador** |  | 3d | 2026-10-14 15:00 A | 2026-10-19 13:00 A |  | 100% |  |  |  |  |  | 24h | 24h |
| 20 | 5.1 | HU-03 · Lógica: registrar a nombre del participante |  | 0.5d | 2026-10-14 15:00 A | 2026-10-14 19:00 A | 15 | 100% |  |  |  |  | Andrea; Gonzalo | 8h | 8h |
| 21 | 5.2 | HU-03 · Pruebas pytest |  | 0.5d | 2026-10-15 09:00 A | 2026-10-15 13:00 A | 20 | 100% |  |  |  |  | Gonzalo | 4h | 4h |
| 22 | 5.3 | HU-03 · HTML básico: formulario del operador |  | 0.5d | 2026-10-15 15:00 A | 2026-10-15 19:00 A | 16 | 100% |  |  |  |  | Santiago | 4h | 4h |
| 23 | 5.4 | HU-03 · Conectar vista con la lógica y la base de datos |  | 1d | 2026-10-16 15:00 A | 2026-10-19 13:00 A | 17, 20, 22 | 100% |  |  |  |  | Santiago | 8h | 8h |
| 24 | 5.5 | Hito: HU-03 terminada y probada | milestone | 0d | 2026-10-19 13:00 A | 2026-10-19 13:00 A | 21, 23 | 100% |  |  |  |  |  |  |  |

| ID | WBS | Task | Type | Duration | Start | Finish | Predecessors | Complete | Remaining | Total slack | Free slack | Constraint | Resources | Work | Actual work |
| --- | --- | --- | --- | --- | --- | --- | --- | --- | --- | --- | --- | --- | --- | --- | --- |
| 25 | 6 | **HU-04: Definir y cambiar el cupo** |  | 8d | 2026-10-16 09:00 A | 2026-10-28 09:00 |  | 50% | 4d | 3d |  |  |  | 28h | 14h |
| 26 | 6.1 | HU-04 · Lógica: aumentar cupo, confirmar espera y guardar historial |  | 1.5d | 2026-10-16 09:00 A | 2026-10-19 13:00 | 9, 14, 22 | 50% | 0.75d | 0.25d | 0d |  | Gonzalo | 12h | 6h |
| 27 | 6.2 | HU-04 · Pruebas pytest |  | 1d | 2026-10-19 15:00 A | 2026-10-20 13:00 A | 26 | 100% |  |  |  |  | Andrea | 8h | 8h |
| 28 | 6.3 | HU-04 · HTML básico: cambiar cupo con motivo |  | 0.5d | 2026-10-19 15:00 | 2026-10-19 19:00 | 22, 26 |  |  | 0.25d | 0d |  | Santiago | 4h |  |
| 29 | 6.4 | HU-04 · Conectar vista con la lógica y la base de datos |  | 0.5d | 2026-10-20 09:00 | 2026-10-20 13:00 | 28, 26 |  |  | 0.25d | 0d |  | Santiago | 4h |  |
| 30 | 6.5 | Hito: HU-04 terminada y probada | milestone | 0d | 2026-10-28 09:00 | 2026-10-28 09:00 | 27, 29 |  |  | 3d |  | start no earlier than 2026-10-28 09:00 |  |  |  |
| 31 | 7 | **HU-05: Cancelar mi inscripción** |  | 9.5d | 2026-10-15 15:00 A | 2026-10-29 09:00 |  | 40% | 5.7d | 2d |  |  |  | 24h | 12h |
| 32 | 7.1 | HU-05 · Lógica: ajustar código existente: cancelar hasta 3 h antes |  | 0.5d | 2026-10-15 15:00 A | 2026-10-15 19:00 A | 21 | 100% |  |  |  |  | Andrea; Gonzalo | 8h | 8h |
| 33 | 7.2 | HU-05 · Pruebas pytest: hasta 3 h antes, después del plazo, cancelación repetida |  | 1d | 2026-10-20 09:00 A | 2026-10-20 19:00 | 32, 28 | 50% | 0.5d | 0.25d | 0d |  | Santiago | 8h | 4h |
| 34 | 7.3 | HU-05 · HTML básico: botón 'Cancelar' |  | 0.5d | 2026-10-21 09:00 | 2026-10-21 13:00 | 28, 33 |  |  | 0.25d | 0d |  | Santiago | 4h |  |
| 35 | 7.4 | HU-05 · Conectar vista con la lógica y la base de datos |  | 0.5d | 2026-10-21 15:00 | 2026-10-21 19:00 | 32, 34 |  |  | 7d | 5d |  | Gonzalo | 4h |  |
| 36 | 7.5 | Hito: HU-05 terminada y probada | milestone | 0d | 2026-10-29 09:00 | 2026-10-29 09:00 | 33, 35 |  |  | 2d |  | start no earlier than 2026-10-29 09:00 |  |  |  |
| 37 | 8 | **HU-06: Controlar cancelaciones y promover la espera** |  | 9d | 2026-10-16 09:00 A | 2026-10-29 09:00 |  | 60% | 3.6d | 2d |  |  |  | 32h | 24h |
| 38 | 8.1 | HU-06 · Lógica: ajustar código existente: promoción automática |  | 0.5d | 2026-10-16 09:00 A | 2026-10-16 13:00 A | 32 | 100% |  |  |  |  | Andrea; Gonzalo | 8h | 8h |
| 39 | 8.2 | HU-06 · Pruebas pytest: promoción del primero, mensaje 'Felicidades, ya estás inscrito', posiciones |  | 1d | 2026-10-16 15:00 A | 2026-10-19 13:00 A | 38 | 100% |  |  |  |  | Andrea; Gonzalo | 16h | 16h |
| 40 | 8.3 | HU-06 · HTML básico: cancelación del operador |  | 0.5d | 2026-10-21 15:00 | 2026-10-21 19:00 | 34 |  |  | 0.25d | 0d |  | Santiago | 4h |  |
| 41 | 8.4 | HU-06 · Conectar vista con la lógica y la base de datos |  | 0.5d | 2026-10-22 09:00 | 2026-10-22 13:00 | 38, 40 |  |  | 6.5d | 4.5d |  | Gonzalo | 4h |  |
| 42 | 8.5 | Hito: HU-06 terminada y probada | milestone | 0d | 2026-10-29 09:00 | 2026-10-29 09:00 | 39, 41 |  |  | 2d |  | start no earlier than 2026-10-29 09:00 |  |  |  |
| 43 | 9 | **HU-07: Consultar la ocupación de un taller** |  | 5.5d | 2026-10-19 15:00 A | 2026-10-27 09:00 |  | 50% | 2.75d | 4d |  |  |  | 16h | 8h |
| 44 | 9.1 | HU-07 · Lógica: contar ocupadas, libres y espera |  | 0.5d | 2026-10-19 15:00 A | 2026-10-19 19:00 A | 26 | 100% |  |  |  |  | Gonzalo | 4h | 4h |
| 45 | 9.2 | HU-07 · Pruebas pytest: ocupadas, libres, espera/máximo; la consulta no cambia datos |  | 0.5d | 2026-10-20 15:00 A | 2026-10-20 19:00 | 44, 29 | 50% | 0.25d | 5.5d | 0d |  | Andrea | 4h | 2h |
| 46 | 9.3 | HU-07 · HTML básico: tabla de ocupación |  | 0.5d | 2026-10-22 09:00 A | 2026-10-22 13:00 | 40 | 50% | 0.25d | 0.5d | 0d |  | Santiago | 4h | 2h |
| 47 | 9.4 | HU-07 · Conectar vista con la lógica y la base de datos |  | 0.5d | 2026-10-22 15:00 | 2026-10-22 19:00 | 44, 46 |  |  | 6d | 2d |  | Gonzalo | 4h |  |
| 48 | 9.5 | Hito: HU-07 terminada y probada | milestone | 0d | 2026-10-27 09:00 | 2026-10-27 09:00 | 45, 47 |  |  | 4d |  | start no earlier than 2026-10-27 09:00 |  |  |  |

| ID | WBS | Task | Type | Duration | Start | Finish | Predecessors | Complete | Remaining | Total slack | Free slack | Constraint | Resources | Work | Actual work |
| --- | --- | --- | --- | --- | --- | --- | --- | --- | --- | --- | --- | --- | --- | --- | --- |
| 49 | 10 | **HU-08: Consultar el estado de mis inscripciones** |  | 5.5d | 2026-10-19 15:00 A | 2026-10-27 09:00 |  | 50% | 2.75d | 4d |  |  |  | 16h | 8h |
| 50 | 10.1 | HU-08 · Lógica: estado y posición por taller |  | 0.5d | 2026-10-19 15:00 A | 2026-10-19 19:00 A | 32, 39 | 100% |  |  |  |  | Andrea | 4h | 4h |
| 51 | 10.2 | HU-08 · Pruebas pytest: estado y posición de cada inscripción |  | 0.5d | 2026-10-20 15:00 A | 2026-10-20 19:00 A | 27, 50 | 100% |  |  |  |  | Andrea | 4h | 4h |
| 52 | 10.3 | HU-08 · HTML básico: 'Mis inscripciones' |  | 0.5d | 2026-10-22 15:00 | 2026-10-22 19:00 | 46 |  |  | 0.5d | 0d |  | Santiago | 4h |  |
| 53 | 10.4 | HU-08 · Conectar vista con la lógica y la base de datos |  | 0.5d | 2026-10-23 09:00 | 2026-10-23 13:00 | 50, 52 |  |  | 3.5d | 0d |  | Gonzalo | 4h |  |
| 54 | 10.5 | Hito: HU-08 terminada y probada | milestone | 0d | 2026-10-27 09:00 | 2026-10-27 09:00 | 51, 53 |  |  | 4d |  | start no earlier than 2026-10-27 09:00 |  |  |  |
| 55 | 11 | **HU-09: Historial de cancelaciones y bloqueo (provisional)** |  | 5d | 2026-10-21 09:00 A | 2026-10-28 09:00 |  | 33% | 3.33d | 3d |  |  |  | 24h | 8h |
| 56 | 11.1 | HU-09 · Lógica: historial y bloqueo de 1 dia |  | 1d | 2026-10-21 09:00 A | 2026-10-21 19:00 A | 39, 51 | 100% |  |  |  |  | Andrea | 8h | 8h |
| 57 | 11.2 | HU-09 · Pruebas pytest: historial ordenado, más de 3 en 72 h bloquea |  | 1d | 2026-10-23 09:00 | 2026-10-23 19:00 | 52, 56 |  |  | 0.5d | 0d |  | Santiago | 8h |  |
| 58 | 11.3 | HU-09 · HTML básico: historial del participante |  | 0.5d | 2026-10-26 09:00 | 2026-10-26 13:00 | 52, 57 |  |  | 2.5d | 0d |  | Santiago | 4h |  |
| 59 | 11.4 | HU-09 · Conectar vista con la lógica y la base de datos |  | 0.5d | 2026-10-26 15:00 | 2026-10-26 19:00 | 56, 58 |  |  | 4d | 1d |  | Gonzalo | 4h |  |
| 60 | 11.5 | Hito: HU-09 terminada y probada | milestone | 0d | 2026-10-28 09:00 | 2026-10-28 09:00 | 57, 59 |  |  | 3d |  | start no earlier than 2026-10-28 09:00 |  |  |  |
| 61 | 12 | **HU-12: Registro e inicio de sesión** |  | 8d | 2026-10-21 09:00 A | 2026-10-30 19:00 |  | 17% | 6.67d |  |  |  |  | 32h | 12h |
| 62 | 12.1 | HU-12 · Bocetos y recorridos de login y registro |  | 0.5d | 2026-10-21 09:00 A | 2026-10-21 13:00 A |  | 100% |  |  |  |  | Andrea; Gonzalo; Santiago | 12h | 12h |
| 63 | 12.2 | HU-12 · Lógica: registro con el código de la base estática (CU-19) |  | 0.5d | 2026-10-26 09:00 | 2026-10-26 13:00 |  |  |  | 4d | 0.5d | start no earlier than 2026-10-26 09:00 | Andrea | 4h |  |
| 64 | 12.3 | HU-12 · Lógica: inicio de sesión según el rol (CU-20) |  | 0.5d | 2026-10-26 09:00 | 2026-10-26 13:00 |  |  |  | 4d | 0.5d | start no earlier than 2026-10-26 09:00 | Santiago | 4h |  |
| 65 | 12.4 | HU-12 · Pruebas pytest: registro e inicio de sesión |  | 0.5d | 2026-10-27 09:00 | 2026-10-27 13:00 | 63, 64 |  |  | 3.5d | 0.5d | start no earlier than 2026-10-27 09:00 | Andrea | 4h |  |
| 66 | 12.5 | HU-12 · HTML básico: pantallas de login y registro |  | 0.5d | 2026-10-27 09:00 | 2026-10-27 13:00 |  |  |  | 3d | 0d | start no earlier than 2026-10-27 09:00 | Gonzalo | 4h |  |
| 67 | 12.6 | HU-12 · Conectar vista con la lógica y la base de datos |  | 0.5d | 2026-10-27 15:00 | 2026-10-27 19:00 | 63, 64, 66 |  |  | 3d | 0d |  | Gonzalo | 4h |  |
| 68 | 12.7 | Hito: HU-12 terminada y probada | milestone | 0d | 2026-10-27 19:00 | 2026-10-27 19:00 | 65, 67 |  |  | 3d |  | start no earlier than 2026-10-27 09:00 |  |  |  |
| 69 | 13 | **HU-10: Buscar inscripciones por participante o taller** |  | 6d | 2026-10-21 09:00 | 2026-10-29 09:00 |  |  |  | 2d |  |  |  | 16h |  |
| 70 | 13.1 | HU-10 · Lógica: búsqueda por participante o taller |  | 0.5d | 2026-10-21 09:00 | 2026-10-21 13:00 | 27, 45 |  |  | 5.5d | 2d |  | Gonzalo | 4h |  |
| 71 | 13.2 | HU-10 · Pruebas pytest: búsqueda por participante y por taller sin cambiar datos |  | 0.5d | 2026-10-23 15:00 | 2026-10-23 19:00 | 53, 70 |  |  | 3.5d | 0d |  | Santiago | 4h |  |
| 72 | 13.3 | HU-10 · HTML básico: buscador del operador |  | 0.5d | 2026-10-26 15:00 | 2026-10-26 19:00 | 58 |  |  | 2.5d | 0d |  | Santiago | 4h |  |
| 73 | 13.4 | HU-10 · Conectar vista con la lógica y la base de datos |  | 0.5d | 2026-10-27 09:00 | 2026-10-27 13:00 | 70, 72 |  |  | 2.5d | 0d |  | Gonzalo | 4h |  |
| 74 | 13.5 | Hito: HU-10 terminada y probada | milestone | 0d | 2026-10-29 09:00 | 2026-10-29 09:00 | 71, 73 |  |  | 2d |  | start no earlier than 2026-10-29 09:00 |  |  |  |

| ID | WBS | Task | Type | Duration | Start | Finish | Predecessors | Complete | Remaining | Total slack | Free slack | Constraint | Resources | Work | Actual work |
| --- | --- | --- | --- | --- | --- | --- | --- | --- | --- | --- | --- | --- | --- | --- | --- |
| 75 | 14 | **HU-11: Lista de confirmados para el instructor** |  | 4d | 2026-10-26 09:00 | 2026-10-30 09:00 |  |  |  | 1d |  |  |  | 16h |  |
| 76 | 14.1 | HU-11 · Lógica: listar solo confirmados |  | 0.5d | 2026-10-26 09:00 | 2026-10-26 13:00 | 71 |  |  | 3.5d | 1d |  | Andrea | 4h |  |
| 77 | 14.2 | HU-11 · Pruebas pytest: solo aparecen confirmados |  | 0.5d | 2026-10-27 15:00 | 2026-10-27 19:00 | 73, 76 |  |  | 2.5d | 0d |  | Andrea | 4h |  |
| 78 | 14.3 | HU-11 · HTML básico: lista del instructor |  | 0.5d | 2026-10-27 09:00 | 2026-10-27 13:00 | 72 |  |  | 3d | 0.5d |  | Santiago | 4h |  |
| 79 | 14.4 | HU-11 · Conectar vista con la lógica y la base de datos |  | 0.5d | 2026-10-28 09:00 | 2026-10-28 13:00 | 76, 77, 78 |  |  | 2.5d | 1.5d |  | Gonzalo | 4h |  |
| 80 | 14.5 | Hito: HU-11 terminada y probada | milestone | 0d | 2026-10-30 09:00 | 2026-10-30 09:00 | 77, 79 |  |  | 1d |  | start no earlier than 2026-10-30 09:00 |  |  |  |
| 81 | 15 | **FASE FINAL: INTEGRACIÓN, CAMBIOS Y ENTREGA** |  | 12d | 2026-10-15 09:00 A | 2026-11-02 09:00 |  | 8% | 11d | 0d |  |  |  | 168h | 12h |
| 82 | 15.1 | Cargar datos de demostración en SQL |  | 12d | 2026-10-15 09:00 A | 2026-10-30 19:00 | 5 | 4% | 11.5d | 0d |  |  | Gonzalo | 96h | 4h |
| 83 | 15.2 | Solicitudes simultáneas por la última plaza (TAL-RC-01) |  | 1d | 2026-10-26 09:00 A | 2026-10-26 19:00 | 57 | 50% | 0.5d | 2d | 0d |  | Andrea | 8h | 4h |
| 84 | 15.3 | CU-17 · Cancelar un taller completo, lógica y pruebas (provisional) |  | 1d | 2026-10-27 09:00 | 2026-10-27 19:00 | 57, 83 |  |  | 3d |  |  | Andrea | 8h |  |
| 85 | 15.4 | CU-18 · Reducir el cupo, lógica y pruebas (cuando el cliente defina quién pasa a espera) |  | 1d | 2026-10-22 09:00 | 2026-10-22 19:00 | 27, 56 |  |  | 6d |  |  | Gonzalo | 8h |  |
| 86 | 15.5 | Pruebas de integración con la base de datos y CI en main |  | 1d | 2026-10-27 09:00 | 2026-10-27 19:00 | 57, 83 |  |  | 2d | 0d |  | Santiago | 8h |  |
| 87 | 15.6 | Diagramas: clases, secuencia y ER |  | 1d | 2026-10-15 09:00 A | 2026-10-15 19:00 |  | 50% | 0.5d | 10d | 8d |  | Andrea; Gonzalo; Santiago | 16h | 4h |
| 88 | 15.7 | README, instrucciones y matriz requisitos-pruebas |  | 1d | 2026-10-28 09:00 | 2026-10-28 19:00 | 86, 87 |  |  | 2d | 0d |  | Andrea; Gonzalo; Santiago | 24h |  |
| 89 | 15.8 | Ensayo de la demostración y correcciones | milestone | 0d | 2026-10-28 19:00 | 2026-10-28 19:00 | 88 |  |  | 2d |  |  | Andrea; Gonzalo; Santiago |  |  |
| 90 | 15.9 | Hito: proyecto listo para la entrega | milestone | 0d | 2026-11-02 09:00 | 2026-11-02 09:00 |  |  |  | 0d |  | start no earlier than 2026-11-02 09:00 |  |  |  |
